Schedule from MS Project, 2009-04-29 to 2009-06-12.

## Calendars

- 标准: Mon-Fri 08:00-12:00, 13:00-17:00; Sat-Sun off.

## Resources

| Resource |
| --- |
| 张晓林 |

## Schedule

| ID | WBS | Task | Duration | Start | Finish | Total slack | Constraint | Resources | Work |
| --- | --- | --- | --- | --- | --- | --- | --- | --- | --- |
| 1 | 1 | **价格基础数据维护** | 15d? | 2009-04-29 | 2009-05-19 | 18d |  |  | 152h |
| 2 | 1.1 | 业务类型 | 2d? | 2009-04-29 | 2009-04-30 | 31d | start no earlier than 2009-04-29 | 张晓林 | 16h |
| 3 | 1.2 | 加工内容 | 3d? | 2009-04-30 | 2009-05-04 | 29d | finish no earlier than 2009-05-04 | 张晓林 | 24h |
| 4 | 1.3 | 机器类型 | 2d? | 2009-05-05 | 2009-05-06 | 27d | finish no earlier than 2009-05-06 | 张晓林 | 16h |
| 5 | 1.4 | 纸型 | 2d? | 2009-05-06 | 2009-05-07 | 26d | finish no earlier than 2009-05-07 | 张晓林 | 16h |
| 6 | 1.5 | 纸质 | 2d? | 2009-05-08 | 2009-05-11 | 24d | finish no earlier than 2009-05-11 | 张晓林 | 16h |
| 7 | 1.6 | 其他价格因素及值 | 2d? | 2009-05-11 | 2009-05-12 | 23d | finish no earlier than 2009-05-12 | 张晓林 | 16h |
| 8 | 1.7 | 业务类型包含的价格因素 | 2d? | 2009-05-13 | 2009-05-14 | 21d | finish no earlier than 2009-05-14 | 张晓林 | 16h |
| 9 | 1.8 | 价格因素之间的依赖关系 | 2d? | 2009-05-14 | 2009-05-15 | 20d | finish no earlier than 2009-05-15 | 张晓林 | 16h |
| 10 | 1.9 | 价格因素之间的依赖关系值 | 2d? | 2009-05-18 | 2009-05-19 | 18d | finish no earlier than 2009-05-19 | 张晓林 | 16h |
| 11 | 2 | **工单基础数据维护** | 13d? | 2009-05-19 | 2009-06-04 | 6d |  |  | 128h |
| 12 | 2.1 | 客户级别 | 2d? | 2009-05-19 | 2009-05-20 | 17d | finish no earlier than 2009-05-20 | 张晓林 | 16h |
| 13 | 2.2 | 客户类型 | 2d? | 2009-05-21 | 2009-05-22 | 15d | finish no earlier than 2009-05-22 | 张晓林 | 16h |
| 14 | 2.3 | 客户行业及子行业 | 2d? | 2009-05-22 | 2009-05-25 | 14d | finish no earlier than 2009-05-25 | 张晓林 | 16h |
| 15 | 2.4 | 会员卡级别 | 2d? | 2009-05-26 | 2009-05-27 | 12d | finish no earlier than 2009-05-27 | 张晓林 | 16h |
| 16 | 2.5 | 印制要求及值 | 2d? | 2009-05-27 | 2009-05-28 | 11d | finish no earlier than 2009-05-28 | 张晓林 | 16h |
| 17 | 2.6 | 挂失方式 | 2d? | 2009-05-29 | 2009-06-01 | 9d | finish no earlier than 2009-06-01 | 张晓林 | 16h |
| 18 | 2.7 | 废张原因 | 2d? | 2009-06-01 | 2009-06-02 | 8d | finish no earlier than 2009-06-02 | 张晓林 | 16h |
| 19 | 2.8 | 加工内容业绩比例 | 2d? | 2009-06-03 | 2009-06-04 | 6d | finish no earlier than 2009-06-04 | 张晓林 | 16h |
| 20 | 3 | **系统维护** | 7d? | 2009-06-04 | 2009-06-12 | 0d |  |  | 64h |
| 21 | 3.1 | ID维护 | 2d? | 2009-06-04 | 2009-06-05 | 5d | finish no earlier than 2009-06-05 | 张晓林 | 16h |
| 22 | 3.2 | 应用程序参数维护 | 2d? | 2009-06-08 | 2009-06-09 | 3d | finish no earlier than 2009-06-09 | 张晓林 | 16h |
| 23 | 3.3 | 公司信息维护 | 2d? | 2009-06-09 | 2009-06-10 | 2d | finish no earlier than 2009-06-10 | 张晓林 | 16h |
| 24 | 3.4 | 分店信息维护 | 2d? | 2009-06-11 | 2009-06-12 | 0d | finish no earlier than 2009-06-12 | 张晓林 | 16h |
