Schedule from MS Project, 2003-09-25 to 2009-12-02.

## Calendars

- 标准: Mon-Fri 08:00-12:00, 13:00-17:00; Sat-Sun off. Exceptions (off unless hours are given): 2009-11-07 08:00-12:00, 13:00-17:00, 2009-11-21 08:00-12:00, 13:00-17:00.

## Resources

| Resource |
| --- |
| 张晓林 |
| 付强 |

## Schedule

| ID | WBS | Task | Duration | Start | Finish | Predecessors | Total slack | Free slack | Constraint | Resources | Work |
| --- | --- | --- | --- | --- | --- | --- | --- | --- | --- | --- | --- |
| 2 | 1 | 增加新业类型，新机器，及其所涉及到的关系数据 | 3d | 2009-10-21 | 2009-10-23 |  | 27d |  | start no earlier than 2009-10-21 | 张晓林 | 24h |
| 3 | 2 | PDF插件引起的问题:结算打印死机，结算打印不显示问题 | 2d | 2009-10-26 | 2009-10-27 |  | 25d |  | start no earlier than 2009-10-23 | 张晓林 | 16h |
| 4 | 3 | 本日工单：改进开单功能，防止由于网络慢连续点击情况 | 1d? | 2009-10-28 | 2009-10-28 |  | 24d |  | start no earlier than 2009-10-27 | 张晓林 | 8h |
| 5 | 4 | 应收款查询和按照时间段统计中增加： 欠款明细功能 | 2d | 2009-10-29 | 2009-10-30 |  | 20d | 0d | start no earlier than 2009-10-28 | 张晓林 | 16h |
| 6 | 5 | 本日工单：快速定位订单 | 1d | 2009-11-02 | 2009-11-02 |  | 21d |  | finish no earlier than 2009-11-02 | 张晓林 | 8h |
| 7 | 6 | 客户一览:增加按照会员号查询 | 1d? | 2009-11-02 | 2009-11-02 | 5 | 20d | 0d |  | 张晓林 | 8h |
| 8 | 7 | 发票领取增加取消 欠票功能 | 1d | 2009-11-03 | 2009-11-03 | 7 | 20d |  | finish no earlier than 2009-11-03 | 张晓林 | 8h |
| 9 | 8 | 增加会员积分 | 3d | 2009-11-04 | 2009-11-06 |  | 15d | 0d | start no earlier than 2009-11-04 | 张晓林 | 24h |
| 10 | 9 | 增加客户预存 | 2d | 2009-11-07 | 2009-11-09 | 9 | 15d |  | start no earlier than 2009-11-07 | 张晓林 | 16h |
| 11 | 10 | 完善及统一各店价格表(待定) | 1d? | 2009-11-10 | 2009-11-10 |  | 14d |  | start no earlier than 2009-11-09 | 张晓林 | 8h |
| 12 | 11 | 报表格式改进及测试(待定) | 1d? | 2009-11-17 | 2009-11-17 | 17 | 12d |  | start no earlier than 2009-11-13 | 张晓林 | 8h |
| 16 | 12 | 预存款在结算工单时不使用 | 1d? | 2009-11-10 | 2009-11-10 |  | 14d |  | start no earlier than 2009-11-10 | 张晓林 | 8h |
| 17 | 13 | 按人员统计开单量(前期总共占1单 后加工参与人每人一单) | 4d | 2009-11-11 | 2009-11-16 | 16 | 12d | 0d |  | 张晓林 | 32h |
| 18 | 14 | 修改结算时的付款方式，发票方式 、发票金额(店长权限) | 4d | 2009-11-17 | 2009-11-20 |  | 4d |  | start no earlier than 2009-11-17 | 张晓林 | 32h |
| 19 | 15 | 冲减工单金额既可以冲减现金也可以冲减记账 业绩同步变更(店长权限) | 4d? | 2009-11-21 | 2009-11-25 |  | 0d |  | start no earlier than 2009-11-21 | 张晓林 | 32h |
| 20 | 16 | 应收款处理中的多收金额和结算时的多收金额记录问题 | 3d? | 2009-11-26 | 2009-11-30 | 19 | 0d |  |  | 张晓林 | 24h |
| 21 | 17 | 发票领取加客户名称查询条件 要打勾一次领取多单 合计发票金额 | 2d? | 2009-12-01 | 2009-12-02 | 20 | 0d |  |  | 张晓林 | 16h |
| 22 | 18 | 会员积分 彩打10元积1分(发布时设置即可) | 1d? | 2003-09-25 | 2003-09-25 |  | 1613d |  |  |  |  |
| 23 | 19 | 优惠抹零权限设置(发布时重新设置即可) | 1d? | 2003-09-25 | 2003-09-25 |  | 1613d |  |  |  |  |
| 24 | 20 | 工单到时间报红功能 可设置报红时间 可统计报红工单 | 1d? | 2003-09-25 | 2003-09-25 |  | 1613d |  |  |  |  |
| 26 | 21 | 兰克流程模块划分问题 | 1d? | 2003-09-25 | 2003-09-25 |  | 1613d |  |  | 付强 | 8h |
| 27 | 22 | 兰克流程模块化改造 | 1d? | 2003-09-25 | 2003-09-25 |  | 1613d |  |  | 付强 | 8h |
| 28 | 23 | 兰克流程模块化与其它模块的耦合问题 | 1d? | 2003-09-25 | 2003-09-25 |  | 1613d |  |  | 付强 | 8h |
| 29 | 24 | 兰克流程UI改造 | 1d? | 2003-09-25 | 2003-09-25 |  | 1613d |  |  | 付强 | 8h |
| 30 | 25 | 兰克流程数据同步问题(需要在外网测试) | 1d? | 2003-09-25 | 2003-09-25 |  | 1613d |  |  | 付强 | 8h |
