# 兰克流程一期开发计划

Schedule from MS Project, 2008-11-03 to 2008-12-31, A marks actual dates.
feikan

## Calendars

- 标准: Mon-Fri 08:00-12:00, 13:00-17:00; Sat-Sun off. Exceptions (off unless hours are given): 2008-11-08 08:00-12:00, 13:00-17:00.

## Resources

| Resource |
| --- |
| 付强 |
| 张行之 |
| 朱静程 |
| 张晓林 |
| 张行之/张晓林 |
| 朱静程/张晓林 |
| 崔霄 |
| 邓海涛 |
| 张晓林/邓海涛 |
| 张晓林/崔霄 |

## Schedule

| ID | WBS | Task | Duration | Start | Finish | Predecessors | Complete | Remaining | Total slack | Free slack | Constraint | Resources | Work | Actual work |
| --- | --- | --- | --- | --- | --- | --- | --- | --- | --- | --- | --- | --- | --- | --- |
| 1 | 1 | 初始数据脚本 | 4d | 2008-11-03 | 2008-11-06 |  |  |  | 40d |  | start no earlier than 2008-11-03 |  |  |  |
| 2 | 2 | **系统管理** | 10d | 2008-11-05 A | 2008-11-17 |  | 90% | 1d | 32d |  |  |  | 80h | 72h |
| 3 | 2.1 | **价格管理** | 10d | 2008-11-05 A | 2008-11-17 |  | 90% | 1d | 32d |  |  |  | 80h | 72h |
| 4 | 2.1.1 | 业务类型设置 | 3d | 2008-11-05 A | 2008-11-07 |  | 90% | 0.3d | 35.3d | 0d | start no earlier than 2008-11-05 | 朱静程 | 24h | 21.6h |
| 5 | 2.1.2 | 门市价格设置 | 4d | 2008-11-08 A | 2008-11-12 | 4 | 90% | 0.4d | 34.7d | 0d |  | 朱静程 | 32h | 28.8h |
| 6 | 2.1.3 | 会员价格设置 | 3d | 2008-11-13 A | 2008-11-17 | 5 | 90% | 0.3d | 32d |  |  | 朱静程 | 24h | 21.6h |
| 7 | 3 | **工单管理** | 27d | 2008-11-05 A | 2008-12-10 |  | 78% | 5.9d | 15d |  |  |  | 200h | 154.4h |
| 8 | 3.1 | **本日工单** | 12d | 2008-11-05 A | 2008-11-19 |  | 82% | 2.1d | 29.8d |  |  |  | 96h | 79.2h |
| 9 | 3.1.1 | **新增工单** | 12d | 2008-11-05 A | 2008-11-19 |  | 82% | 2.1d | 29.8d |  |  |  | 96h | 79.2h |
| 10 | 3.1.1.1 | 选择客户 | 2d | 2008-11-05 A | 2008-11-06 |  | 80% | 0.4d | 38.1d | 0d | start no earlier than 2008-11-05 | 付强 | 16h | 12.8h |
| 11 | 3.1.1.2 | 新增客户 | 2d | 2008-11-07 A | 2008-11-08 | 10 | 80% | 0.4d | 36.5d | 0d | start no earlier than 2008-11-07 | 付强 | 16h | 12.8h |
| 12 | 3.1.1.3 | Code Review | 1d | 2008-11-10 A | 2008-11-10 | 11 | 90% | 0.1d | 35.6d | 0d | start no earlier than 2008-11-10 | 付强 | 8h | 7.2h |
| 13 | 3.1.1.4 | 工单保存 | 4d | 2008-11-11 A | 2008-11-14 | 12 | 80% | 0.8d | 32.4d | 0d | start no earlier than 2008-11-11 | 付强 | 32h | 25.6h |
| 14 | 3.1.1.5 | 界面调整 | 1d | 2008-11-17 A | 2008-11-17 | 13 | 80% | 0.2d | 31.6d | 0d |  | 付强 | 8h | 6.4h |
| 15 | 3.1.1.6 | 开单单据 | 2d | 2008-11-18 A | 2008-11-19 | 14 | 90% | 0.2d | 29.8d | 0d |  | 付强 | 16h | 14.4h |
| 16 | 3.2 | **本日工单列表** | 15d | 2008-11-20 A | 2008-12-10 |  | 75% | 3.8d | 15d |  |  |  | 104h | 75.2h |
| 17 | 3.2.1 | 本日工单过滤及刷新 | 1d | 2008-11-20 A | 2008-11-20 | 15 | 90% | 0.1d | 28.9d | 0d | start no earlier than 2008-11-18 |  |  |  |
| 18 | 3.2.2 | 预付 | 1d | 2008-11-21 A | 2008-11-21 | 17 | 90% | 0.1d | 28d |  |  | 付强 | 8h | 7.2h |
| 19 | 3.2.3 | 分配 | 0.5d | 2008-11-24 A | 2008-11-24 A | 18 | 100% |  |  |  | start no earlier than 2008-11-19 | 付强 | 4h | 4h |
| 20 | 3.2.4 | Code Review | 1d | 2008-11-24 A | 2008-11-25 | 19 | 90% | 0.1d | 26.5d |  | start no earlier than 2008-11-24 | 付强 | 8h | 7.2h |
| 21 | 3.2.5 | 作废 | 0.5d | 2008-11-25 A | 2008-11-25 A | 20 | 100% |  |  |  |  | 付强 | 4h | 4h |
| 22 | 3.2.6 | 返工 | 0.5d | 2008-11-26 A | 2008-11-26 | 21 | 90% | 0.05d | 16.35d | 0d | start no earlier than 2008-11-25 | 付强 | 4h | 3.6h |
| 23 | 3.2.7 | 修正加工单 | 3d | 2008-11-26 A | 2008-12-01 | 22 | 90% | 0.3d | 13.65d | 0d | start no earlier than 2008-11-26 | 付强 | 24h | 21.6h |
| 24 | 3.2.8 | 拼版 | 3d | 2008-12-01 A | 2008-12-04 | 23 | 50% | 1.5d | 12.15d | 0d |  | 付强 | 24h | 12h |
| 25 | 3.2.9 | Code Review | 1d | 2008-12-04 A | 2008-12-05 | 24 | 90% | 0.1d | 11.25d | 0d |  |  |  |  |
| 26 | 3.2.10 | 废稿 | 3d | 2008-12-05 A | 2008-12-10 | 25 | 50% | 1.5d | 9.75d | 0d |  | 付强 | 24h | 12h |
| 27 | 3.2.11 | 完工 | 0.5d | 2008-12-10 A | 2008-12-10 | 26 | 90% | 0.05d | 9.3d | 0d |  | 付强 | 4h | 3.6h |

Notes:
- 15: 开单时要打印单页的加工单(和工单明细格式同) 多留一些工单明细的空白(一式一份)

| ID | WBS | Task | Duration | Start | Finish | Predecessors | Complete | Remaining | Total slack | Free slack | Constraint | Resources | Work | Actual work |
| --- | --- | --- | --- | --- | --- | --- | --- | --- | --- | --- | --- | --- | --- | --- |
| 28 | 4 | **财务管理** | 10d | 2008-11-18 A | 2008-12-01 |  | 86% | 1.4d | 22d |  |  |  | 64h | 57.6h |
| 29 | 4.1 | 收银 | 3d | 2008-11-18 A | 2008-11-20 |  | 90% | 0.3d | 19d | 0d | start no earlier than 2008-11-18 | 朱静程 | 24h | 21.6h |
| 30 | 4.2 | 预收款处理 | 2d | 2008-11-21 A | 2008-11-24 | 29 | 90% | 0.2d | 26.1d | 0d | start no earlier than 2008-11-08 | 朱静程 | 16h | 14.4h |
| 31 | 4.3 | 应收款 | 3d | 2008-11-25 A | 2008-11-27 | 30 | 90% | 0.3d | 23.4d | 0d |  | 朱静程 | 24h | 21.6h |
| 32 | 4.4 | 结算单单据 | 2d | 2008-11-28 A | 2008-12-01 | 31 | 70% | 0.6d | 22d |  |  |  |  |  |
| 33 | 5 | **会员管理** | 9d | 2008-11-17 A | 2008-11-27 |  | 90% | 0.9d | 6d |  |  |  | 72h | 64.8h |
| 34 | 5.1 | 发卡 | 2d | 2008-11-17 A | 2008-11-18 |  | 90% | 0.2d | 21d | 0d | start no earlier than 2008-11-17 | 张晓林 | 16h | 14.4h |
| 35 | 5.2 | 挂失/恢复 | 3d | 2008-11-19 A | 2008-11-21 | 34 | 90% | 0.3d | 9.6d | 0d |  | 张晓林 | 24h | 21.6h |
| 36 | 5.3 | 注销 | 2d | 2008-11-24 A | 2008-11-25 | 35 | 90% | 0.2d | 7.8d | 0d |  | 张晓林 | 16h | 14.4h |
| 37 | 5.4 | 补卡 | 2d | 2008-11-26 A | 2008-11-27 | 36 | 90% | 0.2d | 6d | 0d |  | 张晓林 | 16h | 14.4h |
| 38 | 6 | **简单权限处理** | 5d | 2008-12-11 A | 2008-12-17 |  | 86% | 0.7d | 5d |  |  |  | 40h | 34.4h |
| 39 | 6.1 | 开单修改价格 | 1d | 2008-12-11 A | 2008-12-11 | 27 | 90% | 0.1d | 8.4d | 0d | start no earlier than 2008-12-11 | 付强 | 8h | 7.2h |
| 40 | 6.2 | 菜单处理 | 2d | 2008-12-12 A | 2008-12-15 | 39 | 90% | 0.2d | 6.6d | 0d |  | 付强 | 16h | 14.4h |
| 41 | 6.3 | 授权 | 2d | 2008-12-16 A | 2008-12-17 | 40 | 80% | 0.4d | 5d | 0d | start no earlier than 2008-12-16 | 付强 | 16h | 12.8h |
| 42 | 7 | **雇员及用户管理** | 20.5d | 2008-11-05 A | 2008-12-02 |  | 86% | 2.96d | 21.5d |  |  |  | 36h | 30.8h |
| 43 | 7.1 | 雇员数据维护 | 2d | 2008-11-05 A | 2008-11-06 |  | 80% | 0.4d | 36.6d | 0d | start no earlier than 2008-11-05 | 张晓林 | 16h | 12.8h |
| 44 | 7.2 | 用户 | 2d | 2008-11-07 A | 2008-11-08 | 43 | 90% | 0.2d | 38d |  |  | 张晓林 | 16h | 14.4h |
| 45 | 7.3 | 修改密码 | 0.5d | 2008-12-02 A | 2008-12-02 |  | 90% | 0.05d | 7d | 0d | start no earlier than 2008-12-02 | 崔霄 | 4h | 3.6h |
| 46 | 8 | **报表** | 19d | 2008-11-24 A | 2008-12-18 |  | 86% | 2.66d | 9d |  |  |  | 200h | 172h |
| 47 | 8.1 | 工单查询 | 3d | 2008-11-24 A | 2008-11-26 |  | 70% | 0.9d | 24.4d | 0d | start no earlier than 2008-11-24 | 邓海涛 | 24h | 16.8h |
| 48 | 8.2 | 工单查询报表 | 2d | 2008-11-27 A | 2008-11-28 | 47 | 70% | 0.6d | 23d |  |  | 邓海涛 | 16h | 11.2h |
| 49 | 8.3 | 应收款查询 | 3d | 2008-12-02 A | 2008-12-05 | 45 | 90% | 0.3d | 7.3d | 0d | start no earlier than 2008-12-02 | 崔霄 | 24h | 21.6h |
| 50 | 8.4 | 应收款查询报表 | 2d | 2008-12-05 A | 2008-12-09 | 49 | 90% | 0.2d | 5.5d | 0d | start no earlier than 2008-12-05 | 崔霄 | 16h | 14.4h |
| 51 | 8.5 | 应收款按时间段合计 | 3d | 2008-11-28 A | 2008-12-02 | 37 | 90% | 0.3d | 3.3d | 0d | start no earlier than 2008-11-28 | 张晓林 | 24h | 21.6h |
| 52 | 8.6 | 应收款按时间段合计报表 | 2d | 2008-12-03 A | 2008-12-04 | 51 | 90% | 0.2d | 1.5d | 0d |  | 张晓林 | 16h | 14.4h |
| 53 | 8.7 | 日报 | 3d | 2008-12-05 A | 2008-12-09 | 52 | 90% | 0.3d | 1.8d | 0d | start no earlier than 2008-11-18 | 张晓林 | 24h | 21.6h |
| 54 | 8.8 | 日报报表 | 2d | 2008-12-10 A | 2008-12-11 | 53 | 90% | 0.2d | 4d | 0d |  | 张晓林 | 16h | 14.4h |
| 55 | 8.9 | 月报 | 3d | 2008-12-12 A | 2008-12-16 | 54 | 90% | 0.3d | 1.8d | 0d |  | 张晓林 | 24h | 21.6h |
| 56 | 8.10 | 月报报表 | 2d | 2008-12-17 A | 2008-12-18 | 55 | 90% | 0.2d | 0d |  |  | 张晓林 | 16h | 14.4h |

Notes:
- 32: 结算完之后可以选择是否打印明细，格式同工单明细(也是一式两份,公司一份，客户一份)
- 46: 以下报表供财务人员使用 报表日期已结算日期为准
- 53: (工单号 现金 记账 发票 开单时间 结算时间 底部加合计:工单总数 及各项金额汇总)
- 55: (现金汇总 记账汇总 发票)(每天一合计，列出当月所有)

| ID | WBS | Task | Type | Duration | Start | Finish | Predecessors | Complete | Remaining | Total slack | Free slack | Constraint | Resources | Work | Actual work |
| --- | --- | --- | --- | --- | --- | --- | --- | --- | --- | --- | --- | --- | --- | --- | --- |
| 57 | 9 | **起初数据录入** |  | 11.5d | 2008-12-09 | 2008-12-24 |  |  |  | 5d |  |  |  | 120h |  |
| 58 | 9.1 | 初始应收款数据录入功能 |  | 4d | 2008-12-19 | 2008-12-24 | 56 |  |  | 0d |  | start no earlier than 2008-12-12 | 张晓林 | 32h |  |
| 59 | 9.2 | 会员信息数据导入功能 |  | 4d | 2008-12-09 | 2008-12-15 | 50 |  |  | 5.5d | 0d | start no earlier than 2008-12-09 | 崔霄 | 32h |  |
| 60 | 9.3 | 兰克价格录入 | milestone | 7d | 2008-12-15 | 2008-12-24 | 59 |  |  | 5.5d |  | start no earlier than 2008-12-08 | 崔霄 | 56h |  |
| 61 | 10 | 其他 |  | 5d | 2008-12-18 | 2008-12-24 | 41 |  |  | 5d |  | start no earlier than 2008-12-18 | 付强 | 40h |  |
| 62 | 11 | 公共加密算法 |  | 2d | 2008-12-25 A | 2008-12-26 |  | 90% | 0.2d | 2.8d | 0d | start no earlier than 2008-12-25 | 付强 | 16h | 14.4h |
| 63 | 12 | 登陆用户信息处理 | milestone | 2d | 2008-12-25 A | 2008-12-29 | 62 | 90% | 0.2d | 2.4d |  |  | 付强 | 16h | 14.4h |
| 64 | 13 | 综合测试 | milestone | 5d | 2008-12-25 | 2008-12-31 | 58 |  |  | 0d |  | finish no earlier than 2008-12-26 | 张晓林/崔霄 | 40h |  |

Notes:
- 58: 提供功能 由兰克人员录入
- 59: 需要批量导入功能 Excel格式
