Schedule from MS Project, 2009-02-09 to 2009-04-29.

## Calendars

- 标准: Mon-Fri 08:00-12:00, 13:00-17:00; Sat-Sun off. Exceptions (off unless hours are given): 2009-02-21 08:00-12:00, 13:00-17:00, 2009-03-21 08:00-12:00, 13:00-17:00.

## Resources

| Resource |
| --- |
| 张晓林 |
| 陈汝胤 |
| 陈汝胤/张晓林 |
| 付强 |
| 陈汝胤/张晓林/付强 |
| 完成 |

## Schedule

| ID | WBS | Task | Duration | Start | Finish | Predecessors | Total slack | Free slack | Constraint | Resources | Work |
| --- | --- | --- | --- | --- | --- | --- | --- | --- | --- | --- | --- |
| 1 | 1 | **客户管理** | 3d? | 2009-02-09 | 2009-02-11 |  | 5d |  |  |  | 40h |
| 2 | 1.1 | 客户一览 | 1d? | 2009-02-09 | 2009-02-09 |  | 64d |  | start no earlier than 2009-02-09 | 张晓林 | 8h |
| 3 | 1.2 | 客户资料维护 | 1d? | 2009-02-09 | 2009-02-09 |  | 58d | 0d | start no earlier than 2009-02-09 | 张晓林 | 8h |
| 4 | 1.3 | 客户确认 | 1d? | 2009-02-10 | 2009-02-10 | 3 | 63d |  |  | 张晓林 | 8h |
| 5 | 1.4 | 客户查询 | 2d? | 2009-02-10 | 2009-02-11 |  | 4d | 0d | finish no earlier than 2009-02-11 | 张晓林 | 16h |
| 6 | 2 | 代码及规范检查 | 2d? | 2009-02-12 | 2009-02-13 | 5 | 60d |  | finish no earlier than 2009-02-13 | 付强 | 16h |
| 7 | 3 | **会员管理** | 18d? | 2009-02-12 | 2009-03-06 |  | 4d |  |  |  | 144h |
| 8 | 3.1 | 会员一览 | 4d? | 2009-02-12 | 2009-02-17 | 5 | 4d | 0d | start no earlier than 2009-02-12 | 张晓林 | 32h |
| 9 | 3.2 | 会员充值 | 2d? | 2009-02-18 | 2009-02-19 | 8 | 36d | 0d | start no earlier than 2009-02-16 | 张晓林 | 16h |
| 10 | 3.3 | **会员查询** | 12d? | 2009-02-20 | 2009-03-06 |  | 4d |  |  |  | 96h |
| 11 | 3.3.1 | 会员详情查询 | 2d? | 2009-02-20 | 2009-02-21 | 9 | 36d | 0d | finish no earlier than 2009-02-19 | 张晓林 | 16h |
| 12 | 3.3.2 | 会员消费统计 | 2d? | 2009-02-23 | 2009-02-24 | 11 | 36d | 0d | start no earlier than 2009-02-20 | 张晓林 | 16h |
| 13 | 3.3.3 | 会员充值记录 | 2d? | 2009-02-25 | 2009-02-26 | 12 | 36d | 0d | start no earlier than 2009-02-23 | 张晓林 | 16h |
| 14 | 3.3.4 | 会员管理记录 | 2d? | 2009-02-27 | 2009-03-02 | 13 | 36d | 0d | finish no earlier than 2009-02-26 | 张晓林 | 16h |
| 15 | 3.3.5 | 会员换卡记录 | 2d? | 2009-03-03 | 2009-03-04 | 14 | 36d | 0d | finish no earlier than 2009-03-02 | 张晓林 | 16h |
| 16 | 3.3.6 | 异常消费会员查询 | 2d? | 2009-03-05 | 2009-03-06 | 15 | 36d | 0d | finish no earlier than 2009-03-04 | 张晓林 | 16h |
| 17 | 4 | 代码及规范检查 | 2d? | 2009-03-09 | 2009-03-10 |  | 37d |  | start no earlier than 2009-03-09 | 付强 | 16h |
| 18 | 5 | **活动管理** | 5d? | 2009-03-09 | 2009-03-13 |  | 4d |  |  |  | 40h |
| 19 | 5.1 | 营销活动管理 | 5d? | 2009-03-09 | 2009-03-13 | 16 | 36d | 0d | finish no earlier than 2009-03-11 | 张晓林 | 40h |
| 20 | 6 | 代码及规范检查 | 3d? | 2009-03-16 | 2009-03-18 | 19 | 36d |  | finish no earlier than 2009-03-10 | 付强 | 24h |
| 21 | 7 | **交班管理** | 6d? | 2009-03-16 | 2009-03-21 |  | 4d |  |  |  | 48h |
| 22 | 7.1 | 前台交班 | 2d? | 2009-03-16 | 2009-03-17 | 19 | 4d | 0d | start no earlier than 2009-03-16 | 张晓林 | 16h |
| 23 | 7.2 | 收银交班 | 2d? | 2009-03-18 | 2009-03-19 | 22 | 9d | 0d | finish no earlier than 2009-03-17 | 张晓林 | 16h |
| 24 | 7.3 | 交班查询 | 2d? | 2009-03-20 | 2009-03-21 | 23 | 9d | 0d | finish no earlier than 2009-03-19 | 张晓林 | 16h |
| 25 | 8 | 代码及规范检查 | 2d? | 2009-03-23 | 2009-03-24 |  | 26d |  | finish no earlier than 2009-03-24 | 付强 | 16h |

| ID | WBS | Task | Duration | Start | Finish | Predecessors | Total slack | Free slack | Constraint | Resources | Work |
| --- | --- | --- | --- | --- | --- | --- | --- | --- | --- | --- | --- |
| 26 | 9 | **抄表处理** | 6.5d? | 2009-02-11 | 2009-02-19 |  | 0.5d |  |  |  | 52h |
| 27 | 9.1 | 机器抄表 | 5d? | 2009-02-11 | 2009-02-17 |  | 32.5d | 0d | finish no earlier than 2009-02-17 | 陈汝胤 | 40h |
| 28 | 9.2 | 计数器查询 | 1.5d? | 2009-02-18 | 2009-02-19 | 27 | 0.5d |  | start no earlier than 2009-02-18 | 陈汝胤 | 12h |
| 29 | 10 | 代码及规范检查 | 3d? | 2009-02-20 | 2009-02-23 |  | 48d |  | finish no earlier than 2009-02-23 | 付强 | 24h |
| 30 | 11 | **工单管理** | 10d? | 2009-02-20 | 2009-03-04 |  | 0d |  |  |  | 80h |
| 31 | 11.1 | 废稿登记 | 4d? | 2009-02-20 | 2009-02-24 | 28 | 0d |  | finish no earlier than 2009-02-24 | 陈汝胤 | 32h |
| 32 | 11.2 | 拼板 | 4d? | 2009-02-25 | 2009-03-02 | 31 | 0d |  | finish no earlier than 2009-03-02 | 陈汝胤 | 32h |
| 33 | 11.3 | 上门取活 | 2d? | 2009-03-03 | 2009-03-04 | 32 | 0d |  | finish no earlier than 2009-03-04 | 陈汝胤 | 16h |
| 34 | 12 | 代码及规范检查 | 2d? | 2009-03-05 | 2009-03-06 |  | 39d |  | finish no earlier than 2009-03-06 | 付强 | 16h |
| 35 | 13 | **系统管理** | 9d? | 2009-03-05 | 2009-03-17 |  | 0d |  |  |  | 72h |
| 36 | 13.1 | **价格管理** | 9d? | 2009-03-05 | 2009-03-17 |  | 0d |  |  |  | 72h |
| 37 | 13.1.1 | 现有价格录入方式改造 | 5d? | 2009-03-05 | 2009-03-11 | 33 | 0d |  | finish no earlier than 2009-03-11 | 陈汝胤 | 40h |
| 38 | 13.1.2 | 行业价格设置 | 2d? | 2009-03-12 | 2009-03-13 | 37 | 0d |  |  | 陈汝胤 | 16h |
| 39 | 13.1.3 | 特殊会员价格设置 | 2d? | 2009-03-16 | 2009-03-17 | 38 | 0d |  |  | 陈汝胤 | 16h |
| 40 | 14 | 代码及规范检查 | 2d? | 2009-03-19 | 2009-03-20 |  | 29d |  | start no earlier than 2009-03-19 | 付强 | 16h |
| 41 | 15 | **操作权限管理** | 4d? | 2009-03-18 | 2009-03-21 |  | 0d |  |  |  | 32h |
| 42 | 15.1 | **权限组管理** | 2d? | 2009-03-18 | 2009-03-19 |  | 0d |  |  |  | 16h |
| 43 | 15.1.1 | 权限组一览 | 1d? | 2009-03-18 | 2009-03-18 | 39 | 0d |  | start no earlier than 2009-03-18 | 陈汝胤 | 8h |
| 44 | 15.1.2 | 权限组添加 | 1d? | 2009-03-19 | 2009-03-19 | 43 | 0d |  |  | 陈汝胤 | 8h |
| 45 | 15.2 | **基本操作管理** | 2d? | 2009-03-20 | 2009-03-21 |  | 0d |  |  |  | 16h |
| 46 | 15.2.1 | 操作一览 | 1d? | 2009-03-20 | 2009-03-20 | 44 | 0d |  | start no earlier than 2009-03-11 | 陈汝胤 | 8h |
| 47 | 15.2.2 | 操作添加 | 1d? | 2009-03-21 | 2009-03-21 | 46 | 0d |  |  | 陈汝胤 | 8h |
| 48 | 16 | 代码及规范检查 | 2d? | 2009-03-23 | 2009-03-24 | 47 | 26d |  | start no earlier than 2009-03-18 | 付强 | 16h |
| 49 | 17 | **财务处理** | 14d? | 2009-03-23 | 2009-04-09 |  | 0d |  |  |  | 192h |
| 50 | 17.1 | **财务查询** | 14d? | 2009-03-23 | 2009-04-09 |  | 0d |  |  |  | 192h |
| 51 | 17.1.1 | 帐龄分析 | 2d? | 2009-03-23 | 2009-03-24 | 47 | 0d |  | start no earlier than 2009-03-23 | 陈汝胤 | 16h |
| 52 | 17.1.2 | 客户付款明细 | 2d? | 2009-03-25 | 2009-03-26 | 51 | 0d |  | start no earlier than 2009-03-17 | 陈汝胤 | 16h |
| 53 | 17.1.3 | 客户消费统计 | 2d? | 2009-03-27 | 2009-03-30 | 52 | 0d |  | start no earlier than 2009-03-19 | 陈汝胤 | 16h |
| 54 | 17.1.4 | 工单消费查询 | 2d? | 2009-03-31 | 2009-04-01 | 53 | 0d |  | finish no earlier than 2009-03-24 | 陈汝胤 | 16h |
| 55 | 17.1.5 | 门店营业额查询 | 2d? | 2009-04-02 | 2009-04-03 | 54 | 0d |  | start no earlier than 2009-03-25 | 陈汝胤 | 16h |
| 56 | 17.1.6 | 客户对帐表 | 2d? | 2009-04-06 | 2009-04-07 | 55 | 0d |  | start no earlier than 2009-03-27 | 陈汝胤 | 16h |
| 57 | 17.1.7 | 异常价格工单汇总 | 2d? | 2009-04-08 | 2009-04-09 | 56 | 0d |  | start no earlier than 2009-03-31 | 张晓林 | 16h |
| 58 | 17.1.8 | 波动客户查询 | 2d | 2009-03-23 | 2009-03-24 | 24 | 9d | 0d | finish no earlier than 2009-03-23 | 张晓林 | 16h |
| 59 | 17.1.9 | 新老客户消费统计 | 2d? | 2009-03-25 | 2009-03-26 | 58 | 9d | 0d | start no earlier than 2009-03-24 | 张晓林 | 16h |
| 60 | 17.1.10 | 异常消费会员查询 | 2d? | 2009-03-27 | 2009-03-30 | 59 | 9d | 0d | finish no earlier than 2009-03-27 | 张晓林 | 16h |
| 61 | 17.1.11 | 会员消费统计 | 2d? | 2009-03-31 | 2009-04-01 | 60 | 9d | 0d | finish no earlier than 2009-03-31 | 张晓林 | 16h |
| 62 | 17.1.12 | 无消费客户查询 | 2d? | 2009-04-02 | 2009-04-03 | 61 | 9d | 3d | finish no earlier than 2009-04-02 | 张晓林 | 16h |
| 63 | 18 | 代码及规范检查 | 5d? | 2009-04-06 | 2009-04-10 | 62 | 13d |  | finish no earlier than 2009-04-10 | 付强 | 40h |
| 64 | 19 | 模块测试 | 6d? | 2009-04-10 | 2009-04-17 | 62, 57 | 0d |  | finish no earlier than 2009-04-10 | 陈汝胤/张晓林/付强 | 48h |
| 65 | 20 | 综合测试 | 5d? | 2009-04-20 | 2009-04-24 | 64 | 0d |  | finish no earlier than 2009-04-17 | 陈汝胤/张晓林/付强 | 40h |
| 66 | 21 | 其他 | 3d? | 2009-04-27 | 2009-04-29 | 65 | 0d |  | finish no earlier than 2009-04-22 | 付强 | 24h |
