# 兰克流程文档进度

Schedule from MS Project, 2010-08-18 to 2010-11-10, A marks actual dates.
Phook

## Calendars

- 标准: Mon-Fri 08:00-12:00, 13:00-17:00; Sat-Sun off. Exceptions (off unless hours are given): 2010-10-09 08:00-12:00, 13:00-17:00.

## Resources

| Resource |
| --- |
| 白晓宇 |
| 张晓林 |

## Schedule

| ID | WBS | Task | Duration | Start | Finish | Predecessors | Complete | Remaining | Total slack | Free slack | Constraint | Resources | Work | Actual work | Text1 |
| --- | --- | --- | --- | --- | --- | --- | --- | --- | --- | --- | --- | --- | --- | --- | --- |
| 1 | 1 | **快印易前台** | 53d? | 2010-08-18 08:00 A | 2010-10-28 17:00 |  | 17% | 44.12d? | 9d |  |  |  | 756h | 128h |  |
| 2 | 1.1 | **订单管理** | 13d? | 2010-08-19 08:00 A | 2010-09-06 17:00 |  | 43% | 7.43d? | 48d |  |  |  | 112h | 48h |  |
| 3 | 1.1.1 | **本日订单** | 5d? | 2010-08-19 08:00 A | 2010-08-25 17:00 A |  | 100% |  |  |  |  |  | 40h | 40h |  |
| 4 | 1.1.1.1 | 开单 | 3d? | 2010-08-19 08:00 A | 2010-08-23 17:00 A |  | 100% |  |  |  | finish no earlier than 2010-08-23 17:00 | 白晓宇 | 24h | 24h | order/DailyOrder.aspx |
| 5 | 1.1.1.2 | 本日订单 | 2d? | 2010-08-24 08:00 A | 2010-08-25 17:00 A |  | 100% |  |  |  | finish no earlier than 2010-08-25 17:00 | 白晓宇 | 16h | 16h | order/TodayOrder.aspx |
| 6 | 1.1.2 | 订单查询 | 1d? | 2010-08-26 08:00 A | 2010-08-26 17:00 A |  | 100% |  |  |  | start no earlier than 2010-08-26 08:00 | 白晓宇 | 8h | 8h | order/SearchOrder.aspx |
| 7 | 1.1.3 | 上门取活 | 2d? | 2010-08-27 08:00 | 2010-08-30 17:00 |  |  |  | 53d |  | start no earlier than 2010-08-27 08:00 | 白晓宇 | 16h |  | order/GetOrder.aspx |
| 8 | 1.1.4 | 前期确认 | 1d? | 2010-08-31 08:00 | 2010-08-31 17:00 |  |  |  | 52d |  | start no earlier than 2010-08-31 08:00 | 白晓宇 | 8h |  | order/PhophaseConfirm.aspx |
| 9 | 1.1.5 | **订单修正** | 3d? | 2010-09-01 08:00 | 2010-09-03 17:00 |  |  |  | 49d |  |  |  | 24h |  |  |
| 10 | 1.1.5.1 | 订单修正 | 0.5d? | 2010-09-01 08:00 | 2010-09-01 12:00 |  |  |  | 49d | 0d | start no earlier than 2010-09-01 08:00 | 白晓宇 | 4h |  | finance/SelectAmendmentOrder.aspx |
| 11 | 1.1.5.2 | 修正 | 2.5d? | 2010-09-01 13:00 | 2010-09-03 17:00 | 10 |  |  | 49d |  | start no earlier than 2010-09-01 08:00 | 白晓宇 | 20h |  | finance/AmendmentOrder.aspx |
| 12 | 1.1.6 | 订单冲减 | 2d? | 2010-09-03 08:00 | 2010-09-06 17:00 |  |  |  | 48d |  | finish no earlier than 2010-09-06 17:00 | 张晓林 | 16h |  |  |
| 13 | 1.2 | **业绩管理** | 7d? | 2010-08-18 08:00 A | 2010-08-26 17:00 A |  | 100% |  |  |  |  |  | 56h | 56h |  |
| 14 | 1.2.1 | 业绩调整 | 1d? | 2010-08-18 08:00 A | 2010-08-18 17:00 A |  | 100% |  |  |  | start no earlier than 2010-08-18 08:00 | 张晓林 | 8h | 8h | achievement/AdjustAchievement.aspx |
| 15 | 1.2.2 | 绩效查询 | 1d? | 2010-08-19 08:00 A | 2010-08-19 17:00 A |  | 100% |  |  |  | start no earlier than 2010-08-19 08:00 | 张晓林 | 8h | 8h | achievement/SearchAchievement.aspx |
| 16 | 1.2.3 | 订单绩效查询 | 1d? | 2010-08-20 08:00 A | 2010-08-20 17:00 A |  | 100% |  |  |  | start no earlier than 2010-08-20 08:00 | 张晓林 | 8h | 8h | achievement/AchievementComposition.aspx |
| 17 | 1.2.4 | 员工业绩统计 | 2d? | 2010-08-23 08:00 A | 2010-08-24 17:00 A |  | 100% |  |  |  | finish no earlier than 2010-08-24 17:00 | 张晓林 | 16h | 16h | achievement/AchievementUselessPaperSum.aspx |
| 18 | 1.2.5 | 店长经理绩效统计 | 1d? | 2010-08-25 08:00 A | 2010-08-25 17:00 A |  | 100% |  |  |  | start no earlier than 2010-08-25 08:00 | 张晓林 | 8h | 8h | achievement/AchievementShoperOrManagerSum.aspx |
| 19 | 1.2.6 | 按照人员统计订单量 | 1d? | 2010-08-26 08:00 A | 2010-08-26 17:00 A |  | 100% |  |  |  | start no earlier than 2010-08-26 08:00 | 张晓林 | 8h | 8h | finance/find/SearchOrderCountByEmployee.aspx |
| 20 | 1.3 | **业绩管理** | 4.5d? | 2010-08-27 08:00 A | 2010-09-02 12:00 |  | 67% | 1.5d? | 50.5d |  |  |  | 36h | 24h |  |
| 21 | 1.3.1 | 客户编辑 | 2d? | 2010-08-27 08:00 A | 2010-08-30 17:00 A |  | 100% |  |  |  | finish no earlier than 2010-08-30 17:00 | 张晓林 | 16h | 16h | customer/CustomerList.aspx |
| 22 | 1.3.2 | 客户添加 | 1d? | 2010-08-31 08:00 A | 2010-08-31 17:00 A |  | 100% |  |  |  | start no earlier than 2010-08-31 08:00 | 张晓林 | 8h | 8h | customer/NewCustomer.aspx |
| 23 | 1.3.3 | 客户合并 | 1d? | 2010-09-01 08:00 | 2010-09-01 17:00 |  |  |  | 51d |  | start no earlier than 2010-09-01 08:00 | 张晓林 | 8h |  | customer/CustomerValidate.aspx |
| 24 | 1.3.4 | 客户查询 | 0.5d? | 2010-09-02 08:00 | 2010-09-02 12:00 |  |  |  | 50.5d |  | start no earlier than 2010-09-02 08:00 | 张晓林 | 4h |  | customer/SearchCustomer.aspx |

| ID | WBS | Task | Duration | Start | Finish | Predecessors | Total slack | Free slack | Constraint | Resources | Work | Text1 |
| --- | --- | --- | --- | --- | --- | --- | --- | --- | --- | --- | --- | --- |
| 25 | 1.4 | **会员管理** | 6d? | 2010-09-06 08:00 | 2010-09-13 17:00 |  | 43d |  |  |  | 72h |  |
| 26 | 1.4.1 | 会员编辑 | 2d? | 2010-09-07 08:00 | 2010-09-08 17:00 |  | 46d |  | finish no earlier than 2010-09-08 17:00 | 张晓林 | 16h | membercard/MemberCardList.aspx |
| 27 | 1.4.2 | 会员充值 | 2d? | 2010-09-08 08:00 | 2010-09-09 17:00 |  | 45d |  | finish no earlier than 2010-09-09 17:00 | 张晓林 | 16h | membercard/CampaignCharge.aspx |
| 28 | 1.4.3 | **卡管理** | 2d? | 2010-09-06 08:00 | 2010-09-07 17:00 |  | 47d |  |  |  | 16h |  |
| 29 | 1.4.3.1 | 发卡 | 0.5d? | 2010-09-06 08:00 | 2010-09-06 12:00 |  | 48d | 0d | start no earlier than 2010-09-06 08:00 | 白晓宇 | 4h | membercard/NewMemberCard.aspx |
| 30 | 1.4.3.2 | 挂失/恢复 | 0.5d? | 2010-09-06 13:00 | 2010-09-06 17:00 | 29 | 48d |  | start no earlier than 2010-09-06 08:00 | 白晓宇 | 4h | membercard/ReportLossRecovery.aspx |
| 31 | 1.4.3.3 | 注销 | 0.5d? | 2010-09-07 08:00 | 2010-09-07 12:00 |  | 47d | 0d | start no earlier than 2010-09-07 08:00 | 白晓宇 | 4h | membercard/LogOutMemberCard.aspx |
| 32 | 1.4.3.4 | 补卡 | 0.5d? | 2010-09-07 13:00 | 2010-09-07 17:00 | 31 | 47d |  |  | 白晓宇 | 4h |  |
| 33 | 1.4.4 | **会员查询** | 4d? | 2010-09-08 08:00 | 2010-09-13 17:00 |  | 43d |  |  |  | 24h |  |
| 34 | 1.4.4.1 | 会员详情查询 | 0.5d? | 2010-09-10 13:00 | 2010-09-10 17:00 |  | 44d |  | finish no earlier than 2010-09-10 17:00 | 张晓林 | 4h | membercard/SearchMemberCard.aspx |
| 35 | 1.4.4.2 | 会员消费统计 | 0.5d? | 2010-09-10 08:00 | 2010-09-10 12:00 |  | 44.5d |  | start no earlier than 2010-09-10 08:00 | 张晓林 | 4h | membercard/MemberCardConsumeSum.aspx |
| 36 | 1.4.4.3 | 会员充值记录 | 0.5d? | 2010-09-08 08:00 | 2010-09-08 12:00 |  | 46d | 0d | start no earlier than 2010-09-08 08:00 | 白晓宇 | 4h | membercard/ChargeRecord.aspx |
| 37 | 1.4.4.4 | 会员管理记录 | 0.5d? | 2010-09-08 13:00 | 2010-09-08 17:00 | 36 | 46d |  | start no earlier than 2010-09-08 08:00 | 白晓宇 | 4h | membercard/OperationRecord.aspx |
| 38 | 1.4.4.5 | 会员换卡记录 | 0.5d? | 2010-09-13 08:00 | 2010-09-13 12:00 |  | 43d | 0d | start no earlier than 2010-09-13 08:00 | 张晓林 | 4h | membercard/SwapMemberCardRecord.aspx |
| 39 | 1.4.4.6 | 异常消费会员查询 | 0.5d? | 2010-09-13 13:00 | 2010-09-13 17:00 | 38 | 43d |  | start no earlier than 2010-09-13 08:00 | 张晓林 | 4h | finance/find/ExceptionConsumeMember.aspx |
| 40 | 1.5 | **抄表处理** | 3d? | 2010-09-09 08:00 | 2010-09-13 17:00 |  | 43d |  |  |  | 24h |  |
| 41 | 1.5.1 | 机器抄表 | 2d? | 2010-09-09 08:00 | 2010-09-10 17:00 |  | 43d | 0d | start no earlier than 2010-09-09 08:00 | 白晓宇 | 16h | logcounters/CopyCounter.aspx |
| 42 | 1.5.2 | 计数器查询 | 1d? | 2010-09-13 08:00 | 2010-09-13 17:00 | 41 | 43d |  |  | 白晓宇 | 8h | logcounters/SearchCounter.aspx |
| 43 | 1.6 | **活动管理** | 27d? | 2010-08-18 08:00 | 2010-09-23 17:00 |  | 35d |  |  |  | 72h |  |
| 44 | 1.6.1 | 营销活动一览 | 2d? | 2010-09-14 08:00 | 2010-09-15 17:00 |  | 37d | 0d | finish no earlier than 2010-09-15 17:00 | 白晓宇 | 16h | activities/CampaignList.aspx |
| 45 | 1.6.2 | 营销活动添加 | 1d? | 2010-09-16 08:00 | 2010-09-16 17:00 | 44 | 37d | 0d |  | 白晓宇 | 8h | activities/AddCampaign.aspx |
| 46 | 1.6.3 | 送印张活动一览 | 2d? | 2010-09-17 08:00 | 2010-09-20 17:00 | 45 | 37d | 0d | finish no earlier than 2010-09-20 17:00 | 白晓宇 | 16h | activities/ConcessionList.aspx |
| 47 | 1.6.4 | 送印张活动添加 | 1d? | 2010-09-21 08:00 | 2010-09-21 17:00 | 46 | 37d |  |  | 白晓宇 | 8h | activities/AddConcession.aspx |
| 48 | 1.6.5 | 打折活动一览 | 2d? | 2010-09-22 08:00 | 2010-09-23 17:00 |  | 35d |  | finish no earlier than 2010-09-23 17:00 | 白晓宇 | 16h | activities/DiscountConcessionList.aspx |

| ID | WBS | Task | Duration | Start | Finish | Predecessors | Total slack | Free slack | Constraint | Resources | Work | Text1 |
| --- | --- | --- | --- | --- | --- | --- | --- | --- | --- | --- | --- | --- |
| 49 | 1.6.6 | **打折活动添加** | 1d? | 2010-08-18 08:00 | 2010-08-18 17:00 |  | 61d |  |  | 白晓宇 | 8h | activities/AddDiscountConcession.aspx |
| 50 | 1.6.6.1 | 买M送N活动添加 | 1d? | 2010-08-18 08:00 | 2010-08-18 17:00 |  | 61d |  |  |  |  |  |
| 51 | 1.6.7 | 买M送N活动一览 | 1d? | 2010-08-18 08:00 | 2010-08-18 17:00 |  | 61d |  |  |  |  |  |
| 52 | 1.7 | **营销分析** | 6d? | 2010-09-14 08:00 | 2010-09-21 17:00 |  | 37d |  |  |  | 48h |  |
| 53 | 1.7.1 | 优惠查询根据订单 | 1d? | 2010-09-14 08:00 | 2010-09-14 17:00 |  | 37d | 0d | start no earlier than 2010-09-14 08:00 | 张晓林 | 8h | finance/find/SearchConcession.aspx |
| 54 | 1.7.2 | 优惠查询根据操作人 | 1d? | 2010-09-15 08:00 | 2010-09-15 17:00 | 53 | 37d | 0d |  | 张晓林 | 8h | finance/find/SearchConcessionByUser.aspx |
| 55 | 1.7.3 | 日报 | 1d? | 2010-09-16 08:00 | 2010-09-16 17:00 | 54 | 37d | 0d |  | 张晓林 | 8h | finance/find/DailyPaper.aspx |
| 56 | 1.7.4 | 月报 | 1d? | 2010-09-17 08:00 | 2010-09-17 17:00 | 55 | 37d | 0d |  | 张晓林 | 8h | finance/find/MonthPaper.aspx |
| 57 | 1.7.5 | 报红订单统计 | 1d? | 2010-09-20 08:00 | 2010-09-20 17:00 | 56 | 37d | 0d |  | 张晓林 | 8h | finance/SearchMatureOrder.aspx |
| 58 | 1.7.6 | 年度汇总 | 1d? | 2010-09-21 08:00 | 2010-09-21 17:00 | 57 | 37d |  |  | 张晓林 | 8h | finance/find/YearPaper.aspx |
| 59 | 1.8 | **收银处理** | 4d? | 2010-09-22 08:00 | 2010-09-27 17:00 |  | 33d |  |  |  | 32h |  |
| 60 | 1.8.1 | **收银** | 3d? | 2010-09-22 08:00 | 2010-09-24 17:00 |  | 34d |  |  |  | 24h |  |
| 61 | 1.8.1.1 | 收银 | 0.5d? | 2010-09-22 08:00 | 2010-09-22 12:00 |  | 34d | 0d | start no earlier than 2010-09-22 08:00 | 张晓林 | 4h |  |
| 62 | 1.8.1.2 | 结算 | 2.5d? | 2010-09-22 13:00 | 2010-09-24 17:00 | 61 | 34d |  | start no earlier than 2010-09-22 08:00 | 张晓林 | 20h |  |
| 63 | 1.8.2 | 预收款处理 | 1d? | 2010-09-27 08:00 | 2010-09-27 17:00 |  | 33d |  | start no earlier than 2010-09-27 08:00 | 白晓宇 | 8h |  |
| 64 | 1.9 | **财务处理** | 12d? | 2010-09-27 08:00 | 2010-10-11 17:00 |  | 22d |  |  |  | 96h |  |
| 65 | 1.9.1 | 应收款处理 | 1d? | 2010-09-28 08:00 | 2010-09-28 17:00 |  | 32d |  | start no earlier than 2010-09-28 08:00 | 白晓宇 | 8h |  |
| 66 | 1.9.2 | 发票领取 | 1d? | 2010-09-27 08:00 | 2010-09-27 17:00 |  | 33d |  | start no earlier than 2010-09-27 08:00 | 张晓林 | 8h |  |
| 67 | 1.9.3 | 帐龄分析 | 0.5d? | 2010-09-29 08:00 | 2010-09-29 12:00 |  | 31d | 0d | start no earlier than 2010-09-29 08:00 | 白晓宇 | 4h |  |
| 68 | 1.9.4 | 客户付款明细 | 0.5d? | 2010-09-29 13:00 | 2010-09-29 17:00 | 67 | 31d |  | start no earlier than 2010-09-29 08:00 | 白晓宇 | 4h |  |
| 69 | 1.9.5 | 客户消费统计 | 0.5d? | 2010-09-28 08:00 | 2010-09-28 12:00 |  | 32d | 0d | start no earlier than 2010-09-28 08:00 | 张晓林 | 4h |  |
| 70 | 1.9.6 | 订单消费查询 | 0.5d? | 2010-09-28 13:00 | 2010-09-28 17:00 | 69 | 32d |  | start no earlier than 2010-09-28 08:00 | 张晓林 | 4h |  |
| 71 | 1.9.7 | 应收款查询 | 1d? | 2010-09-29 08:00 | 2010-09-29 17:00 |  | 31d |  | start no earlier than 2010-09-29 08:00 | 张晓林 | 8h |  |
| 72 | 1.9.8 | 应收款按时间段合计 | 1d? | 2010-09-30 08:00 | 2010-09-30 17:00 |  | 30d |  | start no earlier than 2010-09-30 08:00 | 白晓宇 | 8h |  |
| 73 | 1.9.9 | 收银当班查询 | 0.5d? | 2010-09-30 13:00 | 2010-09-30 17:00 |  | 30d |  | finish no earlier than 2010-09-30 17:00 | 张晓林 | 4h |  |
| 74 | 1.9.10 | 应收款付款记录 | 0.5d? | 2010-09-30 13:00 | 2010-09-30 17:00 |  | 30d |  | finish no earlier than 2010-09-30 17:00 | 张晓林 | 4h |  |
| 75 | 1.9.11 | 补领发票记录 | 0.5d? | 2010-10-08 08:00 | 2010-10-08 12:00 |  | 24d | 0d | start no earlier than 2010-10-08 08:00 | 白晓宇 | 4h |  |
| 76 | 1.9.12 | 门店营业额查询 | 0.5d? | 2010-10-08 13:00 | 2010-10-08 17:00 | 75 | 24d |  | start no earlier than 2010-10-08 08:00 | 白晓宇 | 4h |  |
| 77 | 1.9.13 | 预收款查询 | 0.5d? | 2010-10-08 08:00 | 2010-10-08 12:00 |  | 24d | 0d | start no earlier than 2010-10-08 08:00 | 张晓林 | 4h |  |
| 78 | 1.9.14 | 客户对帐表 | 0.5d? | 2010-10-08 13:00 | 2010-10-08 17:00 | 77 | 24d |  | start no earlier than 2010-10-08 08:00 | 张晓林 | 4h |  |
| 79 | 1.9.15 | 异常价格订单汇总 | 0.5d? | 2010-10-09 08:00 | 2010-10-09 12:00 |  | 23d | 0d | start no earlier than 2010-10-09 08:00 | 白晓宇 | 4h |  |
| 80 | 1.9.16 | 波动客户查询 | 0.5d? | 2010-10-09 13:00 | 2010-10-09 17:00 | 79 | 23d |  | start no earlier than 2010-10-09 08:00 | 白晓宇 | 4h |  |
| 81 | 1.9.17 | 新老客户消费统计 | 0.5d? | 2010-10-09 08:00 | 2010-10-09 12:00 |  | 23d | 0d | start no earlier than 2010-10-09 08:00 | 张晓林 | 4h |  |
| 82 | 1.9.18 | 异常消费会员查询 | 0.5d? | 2010-10-09 13:00 | 2010-10-09 17:00 | 81 | 23d |  | start no earlier than 2010-10-09 08:00 | 张晓林 | 4h |  |
| 83 | 1.9.19 | 无消费客户查询 | 0.5d? | 2010-10-11 08:00 | 2010-10-11 12:00 |  | 22d | 0d | start no earlier than 2010-10-11 08:00 | 白晓宇 | 4h |  |
| 84 | 1.9.20 | 优惠确认 | 0.5d? | 2010-10-11 13:00 | 2010-10-11 17:00 | 83 | 22d |  | start no earlier than 2010-10-11 08:00 | 白晓宇 | 4h |  |

Notes:
- 50: 需求需要讨论
- 51: 需求需要讨论

| ID | WBS | Task | Duration | Start | Finish | Predecessors | Total slack | Free slack | Constraint | Resources | Work |
| --- | --- | --- | --- | --- | --- | --- | --- | --- | --- | --- | --- |
| 85 | 1.10 | **交班管理** | 4d? | 2010-10-11 08:00 | 2010-10-14 17:00 |  | 19d |  |  |  | 48h |
| 86 | 1.10.1 | 前台交班 | 2d? | 2010-10-11 08:00 | 2010-10-12 17:00 |  | 21d |  | finish no earlier than 2010-10-12 17:00 | 张晓林 | 16h |
| 87 | 1.10.2 | 收银交班 | 2d? | 2010-10-13 08:00 | 2010-10-14 17:00 |  | 19d |  | finish no earlier than 2010-10-14 17:00 | 张晓林 | 16h |
| 88 | 1.10.3 | 交班查询 | 2d? | 2010-10-12 08:00 | 2010-10-13 17:00 |  | 20d |  | finish no earlier than 2010-10-13 17:00 | 白晓宇 | 16h |
| 89 | 1.11 | **价格管理** | 5d? | 2010-10-14 08:00 | 2010-10-20 17:00 |  | 15d |  |  |  | 72h |
| 90 | 1.11.1 | 业务类型设置 | 1d? | 2010-10-14 08:00 | 2010-10-14 17:00 |  | 19d |  | start no earlier than 2010-10-14 08:00 | 白晓宇 | 8h |
| 91 | 1.11.2 | 门市价格设置 | 2d? | 2010-10-15 08:00 | 2010-10-18 17:00 |  | 17d |  | finish no earlier than 2010-10-18 17:00 | 张晓林 | 16h |
| 92 | 1.11.3 | 会员卡价格设置 | 2d? | 2010-10-15 08:00 | 2010-10-18 17:00 |  | 17d |  | finish no earlier than 2010-10-18 17:00 | 白晓宇 | 16h |
| 93 | 1.11.4 | 行业价格设置 | 2d? | 2010-10-19 08:00 | 2010-10-20 17:00 |  | 15d |  | finish no earlier than 2010-10-20 17:00 | 张晓林 | 16h |
| 94 | 1.11.5 | 特殊会员价格设置 | 2d? | 2010-10-19 08:00 | 2010-10-20 17:00 |  | 15d |  | finish no earlier than 2010-10-20 17:00 | 白晓宇 | 16h |
| 95 | 1.12 | **操作权限管理** | 6d? | 2010-10-21 08:00 | 2010-10-28 17:00 |  | 9d |  |  |  | 88h |
| 96 | 1.12.1 | **人员管理** | 1.5d? | 2010-10-21 08:00 | 2010-10-22 12:00 |  | 13d |  |  |  | 24h |
| 97 | 1.12.1.1 | 雇员一览 | 1d? | 2010-10-21 08:00 | 2010-10-21 17:00 |  | 13d | 0d | start no earlier than 2010-10-21 08:00 | 白晓宇 | 8h |
| 98 | 1.12.1.2 | 雇员添加 | 0.5d? | 2010-10-22 08:00 | 2010-10-22 12:00 | 97 | 13d | 0d |  | 白晓宇 | 4h |
| 99 | 1.12.1.3 | 用户一览 | 1d? | 2010-10-21 08:00 | 2010-10-21 17:00 |  | 13d | 0d | start no earlier than 2010-10-21 08:00 | 张晓林 | 8h |
| 100 | 1.12.1.4 | 用户添加 | 0.5d? | 2010-10-22 08:00 | 2010-10-22 12:00 | 99 | 13d | 0d |  | 张晓林 | 4h |
| 101 | 1.12.2 | **岗位管理** | 1.5d? | 2010-10-22 13:00 | 2010-10-25 17:00 |  | 12d |  |  |  | 12h |
| 102 | 1.12.2.1 | 岗位添加 | 0.5d? | 2010-10-22 13:00 | 2010-10-22 17:00 | 98 | 13d |  | finish no earlier than 2010-10-22 17:00 | 白晓宇 | 4h |
| 103 | 1.12.2.2 | 岗位一览 | 1d? | 2010-10-25 08:00 | 2010-10-25 17:00 |  | 12d |  | start no earlier than 2010-10-25 08:00 | 白晓宇 | 8h |
| 104 | 1.12.3 | **角色管理** | 1.5d? | 2010-10-22 13:00 | 2010-10-25 17:00 |  | 12d |  |  |  | 12h |
| 105 | 1.12.3.1 | 角色添加 | 0.5d? | 2010-10-22 13:00 | 2010-10-22 17:00 | 100 | 13d |  | start no earlier than 2010-10-22 08:00 | 张晓林 | 4h |
| 106 | 1.12.3.2 | 角色一览 | 1d? | 2010-10-25 08:00 | 2010-10-25 17:00 |  | 12d |  | start no earlier than 2010-10-25 08:00 | 张晓林 | 8h |
| 107 | 1.12.4 | **权限组管理** | 1.5d? | 2010-10-26 08:00 | 2010-10-27 12:00 |  | 10.5d |  |  |  | 12h |
| 108 | 1.12.4.1 | 权限组一览 | 1d? | 2010-10-26 08:00 | 2010-10-26 17:00 |  | 11d |  | start no earlier than 2010-10-26 08:00 | 白晓宇 | 8h |
| 109 | 1.12.4.2 | 权限组添加 | 0.5d? | 2010-10-27 08:00 | 2010-10-27 12:00 |  | 10.5d |  | start no earlier than 2010-10-27 08:00 | 白晓宇 | 4h |

| ID | WBS | Task | Duration | Start | Finish | Predecessors | Total slack | Free slack | Constraint | Resources | Work | Text1 |
| --- | --- | --- | --- | --- | --- | --- | --- | --- | --- | --- | --- | --- |
| 110 | 1.12.5 | **基本操作管理** | 1.5d? | 2010-10-26 08:00 | 2010-10-27 12:00 |  | 10.5d |  |  |  | 12h |  |
| 111 | 1.12.5.1 | 操作一览 | 1d? | 2010-10-26 08:00 | 2010-10-26 17:00 |  | 10.5d | 0d | start no earlier than 2010-10-26 08:00 | 张晓林 | 8h |  |
| 112 | 1.12.5.2 | 操作添加 | 0.5d? | 2010-10-27 08:00 | 2010-10-27 12:00 | 111 | 10.5d |  |  | 张晓林 | 4h |  |
| 114 | 1.12.6 | **公共部分** | 1d? | 2010-10-28 08:00 | 2010-10-28 17:00 |  | 9d |  |  |  | 16h |  |
| 115 | 1.12.6.1 | 登陆页面 | 0.5d? | 2010-10-28 08:00 | 2010-10-28 12:00 |  | 9d | 0d | start no earlier than 2010-10-28 08:00 | 白晓宇 | 4h | login.aspx |
| 116 | 1.12.6.2 | 注销用户 | 0.5d? | 2010-10-28 13:00 | 2010-10-28 17:00 | 115 | 9d |  | start no earlier than 2010-10-28 08:00 | 白晓宇 | 4h | LogoutUser.aspx |
| 117 | 1.12.6.3 | 修改密码 | 0.5d? | 2010-10-28 08:00 | 2010-10-28 12:00 |  | 9d | 0d | start no earlier than 2010-10-28 08:00 | 张晓林 | 4h | UpdatePassword.aspx |
| 118 | 1.12.6.4 | 注销退出 | 0.5d? | 2010-10-28 13:00 | 2010-10-28 17:00 | 117 | 9d |  |  | 张晓林 | 4h | LoginOut.aspx |
| 120 | 2 | **快印易后台** | 9d? | 2010-10-29 08:00 | 2010-11-10 17:00 |  | 0d |  |  |  | 144h |  |
| 121 | 2.1 | **基础数据维护** | 4d? | 2010-10-29 08:00 | 2010-11-03 17:00 |  | 5d |  |  |  | 64h |  |
| 122 | 2.1.1 | 业务类型 | 1d? | 2010-10-29 08:00 | 2010-10-29 17:00 |  | 9d |  | start no earlier than 2010-10-29 08:00 | 白晓宇 | 8h | priceBaseData/addBusinessType.aspx |
| 123 | 2.1.2 | 加工内容 | 1d? | 2010-10-29 08:00 | 2010-10-29 17:00 |  | 9d |  | start no earlier than 2010-10-29 08:00 | 张晓林 | 8h | priceBaseData/addProcessContent.aspx |
| 124 | 2.1.3 | 机器类型及机器 | 1d? | 2010-11-01 08:00 | 2010-11-01 17:00 |  | 8d |  | start no earlier than 2010-11-01 08:00 | 张晓林 | 8h | priceBaseData/addMachineType.aspx |
| 125 | 2.1.4 | 纸型 | 0.5d? | 2010-11-01 08:00 | 2010-11-01 12:00 |  | 8d | 0d | start no earlier than 2010-11-01 08:00 | 白晓宇 | 4h | priceBaseData/addPaperSpecifiation.aspx |
| 126 | 2.1.5 | 纸质 | 0.5d? | 2010-11-01 13:00 | 2010-11-01 17:00 | 125 | 7d |  | start no earlier than 2010-11-01 08:00 | 白晓宇 | 4h | priceBaseData/addPaperType.aspx |
| 127 | 2.1.6 | 其他价格因素及值 | 1d? | 2010-11-02 08:00 | 2010-11-02 17:00 |  | 7d |  | start no earlier than 2010-11-02 08:00 | 张晓林 | 8h | priceBaseData/addPriceFactor.aspx |
| 128 | 2.1.7 | 业务类型包含的价格因素 | 1d? | 2010-11-02 08:00 | 2010-11-02 17:00 |  | 7d |  | start no earlier than 2010-11-02 08:00 | 白晓宇 | 8h | priceBaseData/addBusinessTypePriceFactor.aspx |
| 129 | 2.1.8 | 价格因素之间的依赖关系 | 1d? | 2010-11-03 08:00 | 2010-11-03 17:00 |  | 6d |  | start no earlier than 2010-11-03 08:00 | 张晓林 | 8h | priceBaseData/addFactorRelation.aspx |
| 130 | 2.1.9 | 价格因素之间的依赖关系值 | 1d? | 2010-11-03 08:00 | 2010-11-03 17:00 |  | 6d |  | start no earlier than 2010-11-03 08:00 | 白晓宇 | 8h | priceBaseData/addFactorRelationValue.aspx |
| 132 | 2.2 | **业务基础数据维护** | 2d? | 2010-11-04 08:00 | 2010-11-05 17:00 |  | 3d |  |  |  | 32h |  |
| 133 | 2.2.1 | 客户级别 | 0.5d? | 2010-11-04 08:00 | 2010-11-04 12:00 |  | 5d | 0d | start no earlier than 2010-11-04 08:00 | 张晓林 | 4h | orderBaseData/addCustomerLevel.aspx |
| 134 | 2.2.2 | 客户类型 | 0.5d? | 2010-11-04 13:00 | 2010-11-04 17:00 | 133 | 4d |  | start no earlier than 2010-11-04 08:00 | 张晓林 | 4h | orderBaseData/addCustomerType.aspx |
| 135 | 2.2.3 | 客户行业及子行业 | 1d? | 2010-11-04 08:00 | 2010-11-04 17:00 |  | 5d |  | start no earlier than 2010-11-04 08:00 | 白晓宇 | 8h | orderBaseData/addMasterTrade.aspx |
| 136 | 2.2.4 | 会员卡级别 | 0.5d? | 2010-11-05 08:00 | 2010-11-05 12:00 |  | 4d | 0d | start no earlier than 2010-11-05 08:00 | 白晓宇 | 4h | orderBaseData/addMemberCardLevel.aspx |
| 137 | 2.2.5 | 印制要求及值 | 0.5d? | 2010-11-05 13:00 | 2010-11-05 17:00 | 136 | 3d |  | start no earlier than 2010-11-05 08:00 | 白晓宇 | 4h | orderBaseData/addPrintDemand.aspx |
| 138 | 2.2.6 | 挂失方式 | 0.5d? | 2010-11-05 08:00 | 2010-11-05 12:00 |  | 4d | 0d | start no earlier than 2010-11-05 08:00 | 张晓林 | 4h | orderBaseData/addReportLessMode.aspx |
| 139 | 2.2.7 | 废张原因 | 0.5d? | 2010-11-05 13:00 | 2010-11-05 17:00 | 138 | 3d |  | start no earlier than 2010-11-05 08:00 | 张晓林 | 4h | orderBaseData/addTrashReason.aspx |

| ID | WBS | Task | Duration | Start | Finish | Complete | Total slack | Constraint | Resources | Work | Actual work | Text1 |
| --- | --- | --- | --- | --- | --- | --- | --- | --- | --- | --- | --- | --- |
| 141 | 2.3 | **系统基础数据维护** | 3d? | 2010-11-08 08:00 | 2010-11-10 17:00 |  | 0d |  |  | 48h |  |  |
| 142 | 2.3.1 | ID维护 | 1d? | 2010-11-08 08:00 | 2010-11-08 17:00 |  | 3d | start no earlier than 2010-11-08 08:00 | 张晓林 | 8h |  | system/idVindicate.aspx |
| 143 | 2.3.2 | 应用程序参数维护 | 1d? | 2010-11-08 08:00 | 2010-11-08 17:00 |  | 3d | start no earlier than 2010-11-08 08:00 | 白晓宇 | 8h |  | system/addApllicationProperties.aspx |
| 144 | 2.3.3 | 公司信息维护 | 1d? | 2010-11-09 08:00 | 2010-11-09 17:00 |  | 2d | start no earlier than 2010-11-09 08:00 | 张晓林 | 8h |  | system/addCompany.aspx |
| 145 | 2.3.4 | 分店信息维护 | 1d? | 2010-11-09 08:00 | 2010-11-09 17:00 |  | 2d | start no earlier than 2010-11-09 08:00 | 白晓宇 | 8h |  | system/addBranchShop.aspx |
| 146 | 2.3.5 | 积分信息维护 | 1d? | 2010-11-10 08:00 | 2010-11-10 17:00 |  | 0d | start no earlier than 2010-11-10 08:00 | 张晓林 | 8h |  | system/setMarking.aspx |
| 147 | 2.3.6 | 开单默认值维护 | 1d? | 2010-11-10 08:00 | 2010-11-10 17:00 |  | 0d | start no earlier than 2010-11-10 08:00 | 白晓宇 | 8h |  | system/SetDefaultValue.aspx |
| 148 | 3 | **插入任务** | 11d? | 2010-08-23 08:00 A | 2010-09-06 17:00 A | 100% |  |  |  | 20h | 20h |  |
| 149 | 3.1 | 活动页面的修改 | 0.5d? | 2010-08-23 08:00 A | 2010-08-23 12:00 A | 100% |  | start no earlier than 2010-08-23 08:00 | 张晓林 | 4h | 4h |  |
| 150 | 3.2 | 8月25日发布建大店程序 | 1d | 2010-08-25 08:00 A | 2010-08-25 17:00 A | 100% |  |  |  |  |  |  |
| 151 | 3.3 | 9月6号 修改经开店结算bug | 1d? | 2010-09-06 08:00 A | 2010-09-06 17:00 A | 100% |  | start no earlier than 2010-09-06 08:00 | 白晓宇; 张晓林 | 16h | 16h |  |

Notes:
- 148: 快印易~文档进度顺延
- 149: 具体修改内容在 Phook_V5.0Docs进度控制飞看网2010年08月开发工作计划.xls
