Schedule from MS Project, 2003-09-25 to 2010-02-12.

## Calendars

- 标准: Mon-Fri 08:00-12:00, 13:00-17:00; Sat-Sun off.

## Resources

| Resource |
| --- |
| 张小林 |
| 张晓林 |
| 付强/张晓林 |
| 陈汝胤 |
| 付强/陈汝胤 |
| 付强 |

## Schedule

| ID | WBS | Task | Duration | Start | Finish | Predecessors | Total slack | Free slack | Constraint | Resources | Work |
| --- | --- | --- | --- | --- | --- | --- | --- | --- | --- | --- | --- |
| 1 | 1 | 已经完成但未发布功能 | 1d? | 2003-09-25 | 2003-09-25 |  | 1659d |  |  |  |  |
| 3 | 2 | 预存款在结算工单时不使用 | 1d? | 2009-12-08 | 2009-12-08 |  | 48d |  | start no earlier than 2009-12-08 | 张晓林 | 8h |
| 4 | 3 | 按人员统计开单量(前期总共占1单 后加工参与人每人一单) | 1d? | 2009-12-08 | 2009-12-08 |  | 48d |  | start no earlier than 2009-12-08 | 张晓林 | 8h |
| 5 | 4 | 修改结算时的付款方式，发票方式 、发票金额(店长权限) | 1d? | 2009-12-08 | 2009-12-08 |  | 48d |  | start no earlier than 2009-12-08 | 张晓林 | 8h |
| 6 | 5 | 冲减工单金额既可以冲减现金也可以冲减记账 业绩同步变更(店长权限) | 1d? | 2009-12-08 | 2009-12-08 |  | 48d |  | start no earlier than 2009-12-08 | 张晓林 | 8h |
| 7 | 6 | 发票领取加客户名称查询条件 要打勾一次领取多单 合计发票金额 | 1d? | 2009-12-08 | 2009-12-08 |  | 48d |  | start no earlier than 2009-12-08 | 张晓林 | 8h |
| 8 | 7 | 工单到时间报红功能 可设置报红时间 | 1d? | 2009-12-08 | 2009-12-08 |  | 48d |  | start no earlier than 2009-12-08 | 张晓林 | 8h |
| 9 | 8 | 报红工单统计 | 1d? | 2009-12-08 | 2009-12-08 |  | 48d |  | start no earlier than 2009-12-08 | 张晓林 | 8h |
| 10 | 9 | 高新店数据库检查 | 1d? | 2009-12-08 | 2009-12-08 |  | 45d | 0d | start no earlier than 2009-12-08 | 张晓林 | 8h |
| 11 | 10 | 监控及Bug修改 | 3d | 2009-12-09 | 2009-12-11 | 10 | 45d |  |  | 付强/张晓林 | 24h |
| 13 | 11 | **客户管理** | 3d? | 2009-12-14 | 2009-12-16 |  | 42d |  |  |  | 40h |
| 14 | 11.1 | 客户添加 | 1d? | 2009-12-14 | 2009-12-14 |  | 44d |  | start no earlier than 2009-12-11 | 张晓林 | 8h |
| 15 | 11.2 | 客户确认 | 1d? | 2009-12-14 | 2009-12-14 |  | 44d |  | start no earlier than 2009-12-14 | 张晓林 | 8h |
| 16 | 11.3 | 客户查询 | 1d? | 2009-12-14 | 2009-12-14 |  | 44d |  | start no earlier than 2009-12-14 | 张晓林 | 8h |
| 17 | 11.4 | 监控及Bug修改 | 2d | 2009-12-15 | 2009-12-16 |  | 42d |  | start no earlier than 2009-12-14 | 付强/张晓林 | 16h |
| 18 | 12 | **活动管理** | 4d? | 2009-12-17 | 2009-12-22 |  | 38d |  |  |  | 72h |
| 19 | 12.1 | 营销活动一览 | 1d? | 2009-12-17 | 2009-12-17 |  | 41d |  | start no earlier than 2009-12-17 | 张晓林 | 8h |
| 20 | 12.2 | 营销活动添加 | 1d? | 2009-12-17 | 2009-12-17 |  | 41d |  | start no earlier than 2009-12-17 | 张晓林 | 8h |
| 21 | 12.3 | 送印张活动一览 | 1d? | 2009-12-17 | 2009-12-17 |  | 41d |  | start no earlier than 2009-12-17 | 张晓林 | 8h |
| 22 | 12.4 | 送印张活动添加 | 1d? | 2009-12-17 | 2009-12-17 |  | 41d |  | start no earlier than 2009-12-17 | 张晓林 | 8h |
| 23 | 12.5 | 打折活动一览 | 1d? | 2009-12-17 | 2009-12-17 |  | 41d |  | start no earlier than 2009-12-17 | 张晓林 | 8h |
| 24 | 12.6 | 打折活动添加 | 1d? | 2009-12-17 | 2009-12-17 |  | 38d | 0d | start no earlier than 2009-12-17 | 张晓林 | 8h |
| 25 | 12.7 | 监控及Bug修改 | 3d | 2009-12-18 | 2009-12-22 | 24 | 38d |  | finish no earlier than 2009-12-21 | 付强/张晓林 | 24h |
| 26 | 13 | **会员管理** | 5d? | 2009-12-22 | 2009-12-28 |  | 34d |  |  |  | 88h |
| 27 | 13.1 | 会员充值 | 1d? | 2009-12-22 | 2009-12-22 |  | 38d |  | start no earlier than 2009-12-22 | 张晓林 | 8h |

| ID | WBS | Task | Duration | Start | Finish | Predecessors | Total slack | Free slack | Constraint | Resources | Work |
| --- | --- | --- | --- | --- | --- | --- | --- | --- | --- | --- | --- |
| 28 | 13.2 | **会员查询** | 1d? | 2009-12-22 | 2009-12-22 |  | 38d |  |  |  | 48h |
| 29 | 13.2.1 | 会员详情查询 | 1d? | 2009-12-22 | 2009-12-22 |  | 38d |  | start no earlier than 2009-12-22 | 张晓林 | 8h |
| 30 | 13.2.2 | 会员消费统计 | 1d? | 2009-12-22 | 2009-12-22 |  | 38d |  | start no earlier than 2009-12-22 | 张晓林 | 8h |
| 31 | 13.2.3 | 会员充值记录 | 1d? | 2009-12-22 | 2009-12-22 |  | 38d |  | start no earlier than 2009-12-22 | 张晓林 | 8h |
| 32 | 13.2.4 | 会员管理记录 | 1d? | 2009-12-22 | 2009-12-22 |  | 38d |  | start no earlier than 2009-12-22 | 张晓林 | 8h |
| 33 | 13.2.5 | 会员换卡记录 | 1d? | 2009-12-22 | 2009-12-22 |  | 38d |  | start no earlier than 2009-12-22 | 张晓林 | 8h |
| 34 | 13.2.6 | 异常消费会员查询 | 1d? | 2009-12-22 | 2009-12-22 |  | 38d |  | start no earlier than 2009-12-22 | 张晓林 | 8h |
| 35 | 13.3 | 监控及Bug修改 | 4d | 2009-12-23 | 2009-12-28 |  | 34d |  | start no earlier than 2009-12-23 | 付强/张晓林 | 32h |
| 36 | 14 | **财务处理** | 4d? | 2009-12-30 | 2010-01-04 |  | 29d |  |  |  | 64h |
| 37 | 14.1 | 应收款处理(预存款冲减) | 1d? | 2009-12-30 | 2009-12-30 |  | 32d |  | start no earlier than 2009-12-29 | 张晓林 | 8h |
| 38 | 14.2 | 发票领取 | 1d? | 2009-12-30 | 2009-12-30 |  | 32d |  | start no earlier than 2009-12-30 | 张晓林 | 8h |
| 39 | 14.3 | 工单修正 | 1d? | 2009-12-30 | 2009-12-30 |  | 32d |  | start no earlier than 2009-12-30 | 张晓林 | 8h |
| 40 | 14.4 | 工单冲减 | 1d? | 2009-12-30 | 2009-12-30 |  | 32d |  | start no earlier than 2009-12-30 | 张晓林 | 8h |
| 41 | 14.5 | **财务查询** | 1d? | 2009-12-30 | 2009-12-30 |  | 32d |  |  |  | 8h |
| 42 | 14.5.1 | 按照人员统计工单量 | 1d? | 2009-12-30 | 2009-12-30 |  | 32d |  | start no earlier than 2009-12-30 | 张晓林 | 8h |
| 43 | 14.6 | 监控及Bug修改 | 3d | 2009-12-31 | 2010-01-04 |  | 29d |  | start no earlier than 2009-12-31 | 付强/张晓林 | 24h |
| 44 | 15 | **系统管理** | 1d? | 2010-01-05 | 2010-01-05 |  | 28d |  |  |  | 16h |
| 45 | 15.1 | **价格管理** | 1d? | 2010-01-05 | 2010-01-05 |  | 28d |  |  |  | 16h |
| 46 | 15.1.1 | 行业价格设置 | 1d? | 2010-01-05 | 2010-01-05 |  | 28d |  | start no earlier than 2010-01-04 | 张晓林 | 8h |
| 47 | 15.1.2 | 特殊会员价格设置 | 1d? | 2010-01-05 | 2010-01-05 |  | 28d |  | start no earlier than 2010-01-04 | 张晓林 | 8h |
| 48 | 16 | **系统参数设置** | 2d | 2010-01-06 | 2010-01-07 |  | 26d |  |  | 张晓林 | 32h |
| 49 | 16.1 | 监控及Bug修改 | 2d | 2010-01-06 | 2010-01-07 |  | 26d |  | start no earlier than 2010-01-05 | 付强/张晓林 | 16h |
| 50 | 17 | **抄表处理** | 3d | 2010-01-20 | 2010-01-22 |  | 15d |  |  |  | 32h |
| 51 | 17.1 | 机器抄表 | 1d | 2010-01-20 | 2010-01-20 |  | 17d |  | start no earlier than 2010-01-20 | 张晓林 | 8h |
| 52 | 17.2 | 计数器查询 | 1d | 2010-01-20 | 2010-01-20 |  | 15d | 0d | start no earlier than 2010-01-20 | 张晓林 | 8h |
| 53 | 17.3 | 监控及Bug修改 | 2d | 2010-01-21 | 2010-01-22 | 52 | 15d |  |  | 付强/陈汝胤 | 16h |

| ID | WBS | Task | Duration | Start | Finish | Predecessors | Total slack | Free slack | Constraint | Resources | Work |
| --- | --- | --- | --- | --- | --- | --- | --- | --- | --- | --- | --- |
| 54 | 18 | **工单管理** | 2d | 2010-01-25 | 2010-01-26 |  | 13d |  |  |  | 16h |
| 55 | 18.1 | 上门取活 | 1d | 2010-01-25 | 2010-01-25 |  | 13d | 0d | start no earlier than 2010-01-22 | 张晓林 | 8h |
| 56 | 18.2 | 监控及Bug修改 | 1d | 2010-01-26 | 2010-01-26 | 55 | 13d |  |  | 付强/陈汝胤 | 8h |
| 57 | 19 | **财务处理** | 6d | 2010-01-27 | 2010-02-03 |  | 7d |  |  |  | 144h |
| 58 | 19.1 | **财务查询** | 6d | 2010-01-27 | 2010-02-03 |  | 7d |  |  |  | 144h |
| 59 | 19.1.1 | 帐龄分析 | 1d | 2010-01-27 | 2010-01-27 |  | 12d |  | start no earlier than 2010-01-26 | 张晓林 | 8h |
| 60 | 19.1.2 | 客户付款明细 | 1d | 2010-01-27 | 2010-01-27 |  | 12d |  | start no earlier than 2010-01-26 | 张晓林 | 8h |
| 61 | 19.1.3 | 客户消费统计 | 1d | 2010-01-27 | 2010-01-27 |  | 12d |  | start no earlier than 2010-01-26 | 张晓林 | 8h |
| 62 | 19.1.4 | 工单消费查询 | 1d | 2010-01-27 | 2010-01-27 |  | 12d |  | start no earlier than 2010-01-26 | 张晓林 | 8h |
| 63 | 19.1.5 | 门店营业额查询 | 1d | 2010-01-27 | 2010-01-27 |  | 12d |  | start no earlier than 2010-01-26 | 张晓林 | 8h |
| 64 | 19.1.6 | 预收款查询 | 1d | 2010-01-27 | 2010-01-27 |  | 12d |  | start no earlier than 2010-01-26 | 张晓林 | 8h |
| 65 | 19.1.7 | 客户对帐表 | 1d | 2010-01-27 | 2010-01-27 |  | 12d |  | start no earlier than 2010-01-26 | 张晓林 | 8h |
| 66 | 19.1.8 | 异常价格工单汇总 | 1d | 2010-01-27 | 2010-01-27 |  | 12d |  | start no earlier than 2010-01-26 | 张晓林 | 8h |
| 67 | 19.1.9 | 波动客户查询 | 1d | 2010-01-27 | 2010-01-27 |  | 12d |  | start no earlier than 2010-01-26 | 张晓林 | 8h |
| 68 | 19.1.10 | 新老客户消费统计 | 1d | 2010-01-27 | 2010-01-27 |  | 12d |  | start no earlier than 2010-01-26 | 张晓林 | 8h |
| 69 | 19.1.11 | 异常消费会员查询 | 1d | 2010-01-27 | 2010-01-27 |  | 12d |  | start no earlier than 2010-01-26 | 张晓林 | 8h |
| 70 | 19.1.12 | 会员消费统计 | 1d | 2010-01-27 | 2010-01-27 |  | 12d |  | start no earlier than 2010-01-26 | 张晓林 | 8h |
| 71 | 19.1.13 | 无消费客户查询 | 1d | 2010-01-27 | 2010-01-27 |  | 7d | 0d | start no earlier than 2010-01-26 | 张晓林 | 8h |
| 72 | 19.1.14 | 监控及Bug修改 | 5d | 2010-01-28 | 2010-02-03 | 71 | 7d |  |  | 付强/陈汝胤 | 40h |
| 73 | 20 | **后台管理权限设置** | 4d? | 2010-01-28 | 2010-02-02 |  | 8d |  |  |  | 176h |
| 74 | 20.1 | **价格基础数据维护** | 1d? | 2010-01-28 | 2010-01-28 |  | 11d |  |  |  | 72h |
| 75 | 20.1.1 | 业务类型 | 1d? | 2010-01-28 | 2010-01-28 |  | 11d |  | start no earlier than 2010-01-27 | 张晓林 | 8h |
| 76 | 20.1.2 | 加工内容 | 1d? | 2010-01-28 | 2010-01-28 |  | 11d |  | start no earlier than 2010-01-27 | 张晓林 | 8h |
| 77 | 20.1.3 | 机器类型及机器 | 1d? | 2010-01-28 | 2010-01-28 |  | 11d |  | start no earlier than 2010-01-27 | 张晓林 | 8h |
| 78 | 20.1.4 | 纸型 | 1d? | 2010-01-28 | 2010-01-28 |  | 11d |  | start no earlier than 2010-01-27 | 张晓林 | 8h |
| 79 | 20.1.5 | 纸质 | 1d? | 2010-01-28 | 2010-01-28 |  | 11d |  | start no earlier than 2010-01-27 | 张晓林 | 8h |
| 80 | 20.1.6 | 其他价格因素及值 | 1d? | 2010-01-28 | 2010-01-28 |  | 11d |  | start no earlier than 2010-01-27 | 张晓林 | 8h |
| 81 | 20.1.7 | 业务类型包含的价格因素 | 1d? | 2010-01-28 | 2010-01-28 |  | 11d |  | start no earlier than 2010-01-27 | 张晓林 | 8h |
| 82 | 20.1.8 | 价格因素之间的依赖关系 | 1d? | 2010-01-28 | 2010-01-28 |  | 11d |  | start no earlier than 2010-01-27 | 张晓林 | 8h |
| 83 | 20.1.9 | 价格因素之间的依赖关系值 | 1d? | 2010-01-28 | 2010-01-28 |  | 11d |  | start no earlier than 2010-01-27 | 张晓林 | 8h |

| ID | WBS | Task | Duration | Start | Finish | Predecessors | Total slack | Constraint | Resources | Work |
| --- | --- | --- | --- | --- | --- | --- | --- | --- | --- | --- |
| 84 | 20.2 | **工单基础数据维护** | 4d? | 2010-01-28 | 2010-02-02 |  | 8d |  |  | 104h |
| 85 | 20.2.1 | 客户级别 | 1d? | 2010-01-28 | 2010-01-28 |  | 11d | start no earlier than 2010-01-27 | 张晓林 | 8h |
| 86 | 20.2.2 | 客户类型 | 1d? | 2010-01-28 | 2010-01-28 |  | 11d | start no earlier than 2010-01-27 | 张晓林 | 8h |
| 87 | 20.2.3 | 客户行业及子行业 | 1d? | 2010-01-28 | 2010-01-28 |  | 11d | start no earlier than 2010-01-27 | 张晓林 | 8h |
| 88 | 20.2.4 | 会员卡级别 | 1d? | 2010-01-28 | 2010-01-28 |  | 11d | start no earlier than 2010-01-27 | 张晓林 | 8h |
| 89 | 20.2.5 | 印制要求及值 | 1d? | 2010-01-28 | 2010-01-28 |  | 11d | start no earlier than 2010-01-27 | 张晓林 | 8h |
| 90 | 20.2.6 | 挂失方式 | 1d? | 2010-01-28 | 2010-01-28 |  | 11d | start no earlier than 2010-01-27 | 张晓林 | 8h |
| 91 | 20.2.7 | 废张原因 | 1d? | 2010-01-28 | 2010-01-28 |  | 11d | start no earlier than 2010-01-27 | 张晓林 | 8h |
| 92 | 20.2.8 | ID维护 | 1d | 2010-01-28 | 2010-01-28 |  | 11d | start no earlier than 2010-01-27 | 张晓林 | 8h |
| 93 | 20.2.9 | 应用程序参数维护 | 1d | 2010-01-28 | 2010-01-28 |  | 11d | start no earlier than 2010-01-27 | 张晓林 | 8h |
| 94 | 20.2.10 | 监控及Bug修改 | 4d | 2010-01-28 | 2010-02-02 |  | 8d | start no earlier than 2010-01-27 | 付强/张晓林 | 32h |
| 96 | 21 | 数据同步发布 | 2d | 2010-02-04 | 2010-02-05 |  | 0d | start no earlier than 2010-02-03 | 付强 | 16h |
| 97 | 22 | 监控及Bug修改 | 5d | 2010-02-08 | 2010-02-12 | 96 | 0d |  | 付强 | 40h |

Notes:
- 92: Flag_NO 起始值 和 终止值不能修改
- 93: 参数ID不能修改 参数加说明字段
